# AVFin-4a

Schedule from MS Project, 2014-08-04 to 2014-10-10, costs in $.
ViewPoint Partners

## Calendars

- Standard: Mon-Fri 08:00-12:00, 13:00-17:00; Sat-Sun off.

## Resources

| Resource | Group | Rate | Notes |
| --- | --- | --- | --- |
| Emily Michaels | Mgmt | 100 | Emily's cell phone: 917-555-7373 |
| Your Name | PM | 60 |  |
| General Labor | Temp | 20 |  |
| Coordinator | Temp | 10 |  |
| Eli Shalev | PM | 40 |  |
| Donna Rand | PM | 40 |  |
| Contract Trainer | Temp | 20 |  |

## Schedule

| ID | WBS | Task | Type | Duration | Start | Finish | Predecessors | Total slack | Free slack | Resources | Work | Cost |
| --- | --- | --- | --- | --- | --- | --- | --- | --- | --- | --- | --- | --- |
| 1 | A | **Analysis** |  | 14d | 2014-08-04 | 2014-08-21 |  | 0d |  |  | 176h | 13,120 |
| 2 | A.1 | Detail current status |  | 4d | 2014-08-04 | 2014-08-07 |  | 0d |  | Your Name; Emily Michaels | 40h | 2,720 |
| 3 | A.2 | Conduct needs analysis |  | 2w | 2014-08-08 | 2014-08-21 | 2 | 0d |  | Your Name; Emily Michaels | 136h | 10,400 |
| 4 | 1.3 | Analysis completed | milestone | 0d | 2014-08-21 | 2014-08-21 | 3 | 0d |  | Emily Michaels |  |  |
| 5 | B | **Design** |  | 17d | 2014-08-22 | 2014-09-15 |  | 0d |  |  | 192h | 13,760 |
| 6 | B.1 | Build Request for Proposal |  | 4d | 2014-08-22 | 2014-08-27 | 4 | 0d |  | Emily Michaels; Your Name | 64h | 5,120 |
| 7 | B.2 | Gather vendor bids |  | 2w | 2014-08-28 | 2014-09-10 | 6 | 0d |  | Your Name | 80h | 4,800 |
| 8 | B.3 | Choose vendors |  | 3d | 2014-09-11 | 2014-09-15 | 7 | 0d |  | Your Name; Emily Michaels | 48h | 3,840 |
| 9 | B.99 | Sign contracts | milestone | 0d | 2014-09-15 | 2014-09-15 | 8 | 0d |  | Emily Michaels |  |  |
| 10 | C | **Installation** |  | 11d | 2014-09-16 | 2014-09-30 |  | 0d |  |  | 192h | 4,640 |
| 11 | C.1 | Install cabling |  | 1d | 2014-09-16 | 2014-09-16 | 9 | 0d |  | General Labor [400%] | 32h | 640 |
| 12 | C.2 | Install hardware |  | 5d | 2014-09-17 | 2014-09-23 | 11 | 0d |  | General Labor [200%] | 80h | 1,600 |
| 13 | C.3 | Install software |  | 5d | 2014-09-24 | 2014-09-30 | 12 | 0d |  | General Labor [200%] | 80h | 2,400 |
| 14 | 3.4 | Installation completed | milestone | 0d | 2014-09-30 | 2014-09-30 | 13 | 0d |  | General Labor |  |  |
| 15 | L | **Security** |  | 5d | 2014-10-01 | 2014-10-07 | 10 | 3d |  |  | 80h | 3,200 |
| 16 | L.7 | Create user IDs and passwords |  | 1d | 2014-10-01 | 2014-10-01 | 14 | 3d | 0d | General Labor; Your Name | 16h | 640 |
| 17 | L.8 | Create access hierarchy |  | 2d | 2014-10-02 | 2014-10-03 | 16 | 3d | 0d | General Labor; Your Name | 32h | 1,280 |
| 18 | L.9 | Create touch panel images |  | 2d | 2014-10-06 | 2014-10-07 | 17 | 3d | 0d | General Labor; Your Name | 32h | 1,280 |
| 19 | 4.4 | Security completed | milestone | 0d | 2014-10-07 | 2014-10-07 | 16, 17, 18 | 3d |  | General Labor; Your Name |  |  |
| 20 | E | **Testing** |  | 2d | 2014-10-01 | 2014-10-02 | 10 | 0d |  |  | 96h | 4,480 |
| 21 | E.1 | Test hardware |  | 1d | 2014-10-01 | 2014-10-01 |  | 1d |  | Your Name; Eli Shalev; Donna Rand | 24h | 1,120 |
| 22 | E.2 | Test software |  | 2d | 2014-10-01 | 2014-10-02 |  | 0d |  | Your Name; Eli Shalev; Donna Rand | 48h | 2,240 |
| 23 | E.5 | Test security |  | 1d | 2014-10-01 | 2014-10-01 |  | 1d |  | Your Name; Eli Shalev; Donna Rand | 24h | 1,120 |
| 24 | 5.4 | Testing completed | milestone | 0d | 2014-10-02 | 2014-10-02 | 21, 22, 23 | 0d |  | Your Name; Eli Shalev; Donna Rand |  |  |

| ID | WBS | Task | Type | Duration | Start | Finish | Predecessors | Total slack | Resources | Work | Cost |
| --- | --- | --- | --- | --- | --- | --- | --- | --- | --- | --- | --- |
| 25 | D | **Training** |  | 6d | 2014-10-03 | 2014-10-10 | 20 | 0d |  | 192h | 2,880 |
| 26 | D.1 | Train management |  | 6d | 2014-10-03 | 2014-10-10 | 24 | 0d | Contract Trainer; Coordinator | 96h | 1,440 |
| 27 | D.2 | Train users |  | 6d | 2014-10-03 | 2014-10-10 | 24 | 0d | Contract Trainer; Coordinator | 96h | 1,440 |
| 28 | 6.3 | Training completed | milestone | 0d | 2014-10-10 | 2014-10-10 | 27 | 0d | Contract Trainer; Coordinator |  |  |
