# AVLvl-4-au1-forPam

Schedule from MS Project, 2014-08-04 to 2014-10-02, costs in $.
ViewPoint Partners

## Calendars

- Standard: Mon-Fri 08:00-12:00, 13:00-17:00; Sat-Sun off.

## Resources

| Resource | Group | Rate | Notes |
| --- | --- | --- | --- |
| Emily Michaels | Mgmt | 100 | Emily's cell phone: 917-555-7373 |
| Your Name | PM | 50 |  |
| General Labor | Temp | 20 |  |
| Coordinator | Temp | 10 |  |
| Eli Shalev | PM | 40 |  |
| Donna Rand | PM | 40 |  |
| Contract Trainer | Temp | 20 |  |

## Schedule

| ID | WBS | Task | Type | Duration | Start | Finish | Predecessors | Total slack | Free slack | Resources | Work | Cost |
| --- | --- | --- | --- | --- | --- | --- | --- | --- | --- | --- | --- | --- |
| 1 | A | **Analysis** |  | 14d | 2014-08-04 | 2014-08-21 |  | 0d |  |  | 200h | 7,200 |
| 2 | A.1 | Detail current status |  | 4d | 2014-08-04 | 2014-08-07 |  | 0d |  | Your Name; Emily Michaels | 40h | 2,400 |
| 3 | A.2 | Conduct needs analysis |  | 2w | 2014-08-08 | 2014-08-21 | 2 | 0d |  | Your Name; Coordinator | 160h | 4,800 |
| 4 | 1.3 | Analysis completed | milestone | 0d | 2014-08-21 | 2014-08-21 | 3 | 27d |  |  |  |  |
| 5 | B | **Design** |  | 16d | 2014-08-20 | 2014-09-10 |  | 0d |  |  | 176h | 11,200 |
| 6 | B.1 | Build Request for Proposal |  | 4d | 2014-08-20 | 2014-08-25 | 3FS-2d | 0d |  | Emily Michaels; Your Name | 64h | 4,800 |
| 7 | B.2 | Gather vendor bids |  | 2w | 2014-08-26 | 2014-09-08 | 6 | 0d |  | Your Name | 80h | 4,000 |
| 8 | B.3 | Choose vendors |  | 2d | 2014-09-09 | 2014-09-10 | 7 | 0d |  | Your Name; Emily Michaels | 32h | 2,400 |
| 9 | B.99 | Sign contracts | milestone | 0d | 2014-09-10 | 2014-09-10 | 8 | 0d |  |  |  |  |
| 10 | C | **Installation** |  | 5d | 2014-09-16 | 2014-09-22 |  | 0d |  |  | 128h | 3,040 |
| 11 | C.1 | Install cabling |  | 1d | 2014-09-16 | 2014-09-16 | 9FS+3d | 0d |  | General Labor [400%] | 32h | 640 |
| 12 | C.2 | Install hardware |  | 3d | 2014-09-16 | 2014-09-19 | 11SS+5% | 0d |  | General Labor [200%] | 48h | 960 |
| 13 | C.3 | Install software |  | 3d | 2014-09-18 | 2014-09-22 | 12FS-5% | 0d |  | General Labor [200%] | 48h | 1,440 |
| 14 | 3.4 | Installation completed | milestone | 0d | 2014-09-22 | 2014-09-22 | 13 | 0d |  |  |  |  |
| 15 | L | **Security** |  | 2d | 2014-09-23 | 2014-09-24 | 10 | 6d |  |  | 64h | 2,240 |
| 16 | L.7 | Create user IDs and passwords |  | 1d | 2014-09-23 | 2014-09-23 |  | 7d | 0.5d | General Labor; Your Name | 16h | 560 |
| 17 | L.8 | Create access hierarchy |  | 1d | 2014-09-23 | 2014-09-23 |  | 7d | 0.5d | General Labor; Your Name | 16h | 560 |
| 18 | L.9 | Create touch panel images |  | 2d | 2014-09-23 | 2014-09-24 |  | 6d | 0d | General Labor; Your Name | 32h | 1,120 |
| 19 | 4.4 | Security completed | milestone | 0d | 2014-09-24 | 2014-09-24 | 16, 17, 18 | 6d |  |  |  |  |
| 20 | E | **Testing** |  | 2d | 2014-09-23 | 2014-09-24 | 10 | 0d |  |  | 96h | 4,160 |
| 21 | E.1 | Test hardware |  | 1d | 2014-09-23 | 2014-09-23 |  | 1d |  | Donna Rand; Your Name; Eli Shalev | 24h | 1,040 |
| 22 | E.2 | Test software |  | 2d | 2014-09-23 | 2014-09-24 |  | 0d |  | Your Name; Eli Shalev; Donna Rand | 48h | 2,080 |
| 23 | E.5 | Test security |  | 1d | 2014-09-23 | 2014-09-23 |  | 1d |  | Donna Rand; Your Name; Eli Shalev | 24h | 1,040 |
| 24 | 5.4 | Testing completed | milestone | 0d | 2014-09-24 | 2014-09-24 | 21, 22, 23 | 0d |  |  |  |  |

| ID | WBS | Task | Type | Duration | Start | Finish | Predecessors | Total slack | Resources | Work | Cost |
| --- | --- | --- | --- | --- | --- | --- | --- | --- | --- | --- | --- |
| 25 | D | **Training** |  | 6d | 2014-09-25 | 2014-10-02 | 20 | 0d |  | 96h | 1,440 |
| 26 | D.1 | Train management |  | 3d | 2014-09-25 | 2014-09-29 |  | 0d | Contract Trainer; Coordinator | 48h | 720 |
| 27 | D.2 | Train users |  | 3d | 2014-09-30 | 2014-10-02 | 26 | 0d | Contract Trainer; Coordinator | 48h | 720 |
| 28 | 6.3 | Training completed | milestone | 0d | 2014-10-02 | 2014-10-02 | 27 | 0d |  |  |  |
