# Your Name

Schedule from MS Project, 2014-08-04 to 2014-11-04, status date 2014-10-10, costs in $, A marks actual dates.
ViewPoint Partners

## Calendars

- Standard: Mon-Fri 08:00-12:00, 13:00-17:00; Sat-Sun off.

## Resources

| Resource | Group | Unit | Rate | Notes |
| --- | --- | --- | --- | --- |
| Emily Michaels | Mgmt |  | 100 |  |
| Alex Kolar | PM |  | 60 |  |
| General Labor | Temp |  | 20 |  |
| Coordinator | Temp |  | 10 |  |
| Eli Shalev | PM |  | 40 |  |
| Donna Rand | PM |  | 40 |  |
| Contract Trainer | Temp |  | 20 |  |
| Cabling |  | Ft | 0.5 |  |
| Computers |  |  | 1200 |  |
| Network printer |  |  | 1000 |  |
| LCD HD 42" display panels |  |  | 1200 |  |
| Touch panels |  |  | 1000 |  |
| Control system |  |  | 20000 |  |
| Microphones |  |  | 50 |  |
| Speakers |  |  | 250 |  |
| Digital video recorders |  |  | 800 |  |
| Conference tables |  |  | 950 |  |
| Chairs |  |  | 50 | 12 chairs per room |

## Schedule

| ID | WBS | Task | Type | Duration | Start | Finish | Predecessors | Complete | Remaining | Baseline start | Baseline finish | Baseline duration | Total slack | Free slack | Resources | Work | Actual work | Cost | Baseline cost | Actual cost |
| --- | --- | --- | --- | --- | --- | --- | --- | --- | --- | --- | --- | --- | --- | --- | --- | --- | --- | --- | --- | --- |
| 1 | A | **Analysis** |  | 13d | 2014-08-04 A | 2014-08-20 A |  | 100% |  | 2014-08-04 | 2014-08-20 | 13d |  |  |  | 168h | 168h | 12,320 | 13,120 | 12,320 |
| 2 | A.1 | Detail current status |  | 3d | 2014-08-04 A | 2014-08-06 A |  | 100% |  | 2014-08-04 | 2014-08-06 | 3d |  |  | Alex Kolar; Emily Michaels | 32h | 32h | 1,920 | 2,720 | 1,920 |
| 3 | A.2 | Conduct needs analysis |  | 2w | 2014-08-07 A | 2014-08-20 A | 2 | 100% |  | 2014-08-07 | 2014-08-20 | 2w |  |  | Alex Kolar; Emily Michaels | 136h | 136h | 10,400 | 10,400 | 10,400 |
| 4 | 1.3 | Analysis completed | milestone | 0d | 2014-08-20 A | 2014-08-20 A | 3 | 100% |  | 2014-08-20 | 2014-08-20 | 0d |  |  | Emily Michaels |  |  |  |  |  |
| 5 | B | **Design** |  | 12.7d | 2014-08-15 A | 2014-09-02 A |  | 100% |  | 2014-08-21 | 2014-09-12 | 17d |  |  |  | 192h | 192h | 15,760 | 13,760 | 15,760 |
| 6 | B.1 | Build Request for Proposal |  | 4d | 2014-08-15 A | 2014-08-22 A | 4 | 100% |  | 2014-08-21 | 2014-08-26 | 4d |  |  | Emily Michaels; Alex Kolar | 64h | 64h | 5,120 | 5,120 | 5,120 |
| 7 | B.2 | Gather vendor bids |  | 2w | 2014-08-15 A | 2014-08-28 A | 6 | 100% |  | 2014-08-27 | 2014-09-09 | 2w |  |  | Alex Kolar | 80h | 80h | 4,800 | 4,800 | 4,800 |
| 8 | B.3 | Choose vendors |  | 3d | 2014-08-20 A | 2014-09-02 A | 7 | 100% |  | 2014-09-10 | 2014-09-12 | 3d |  |  | Alex Kolar; Emily Michaels | 48h | 48h | 3,840 | 3,840 | 3,840 |
| 9 | B.99 | Sign contracts | milestone | 0d | 2014-09-02 A | 2014-09-02 A | 8 | 100% |  | 2014-09-12 | 2014-09-12 | 0d |  |  | Emily Michaels |  |  | 2,000 |  | 2,000 |
| 10 | C | **Installation** |  | 23.3d | 2014-09-02 A | 2014-10-03 A |  | 100% |  | 2014-09-15 | 2014-09-29 | 11d |  |  |  | 212h | 212h | 60,790 | 60,390 | 60,790 |
| 11 | C.1 | Install cabling |  | 1d | 2014-09-02 A | 2014-09-03 A | 9 | 100% |  | 2014-09-15 | 2014-09-15 | 1d |  |  | General Labor [400%]; Cabling [1000 Ft] | 32h | 32h | 1,140 | 1,140 | 1,140 |
| 12 | C.2 | Install hardware |  | 6.25d | 2014-09-03 A | 2014-09-26 A | 11 | 100% |  | 2014-09-16 | 2014-09-22 | 5d |  |  | General Labor [200%]; Computers [500%]; Control system; Digital video recorders [500%]; LCD HD 42" display panels [500%]; Microphones [1000%]; Network printer; Speakers [2000%]; Touch panels [500%]; Conference tables [500%]; Chairs [6000%] | 100h | 100h | 57,250 | 56,850 | 57,250 |
| 13 | C.3 | Install software |  | 5d | 2014-09-29 A | 2014-10-03 A | 12 | 100% |  | 2014-09-23 | 2014-09-29 | 5d |  |  | General Labor [200%] | 80h | 80h | 2,400 | 2,400 | 2,400 |
| 14 | 3.4 | Installation completed | milestone | 0d | 2014-10-03 A | 2014-10-03 A | 13 | 100% |  | 2014-09-29 | 2014-09-29 | 0d |  |  | General Labor |  |  |  |  |  |
| 15 | L | **Security** |  | 6d | 2014-10-03 A | 2014-10-13 | 10 | 83% | 1d | 2014-09-29 | 2014-10-09 | 8d | 16d |  |  | 64h | 56h | 1,920 | 2,880 | 1,440 |
| 16 | L.7 | Create user IDs and passwords |  | 2d | 2014-10-03 A | 2014-10-07 A | 14 | 100% |  | 2014-09-29 | 2014-10-01 | 2d |  |  | General Labor; Alex Kolar | 16h | 16h | 320 | 320 | 320 |
| 17 | L.8 | Create access hierarchy |  | 3d | 2014-10-08 A | 2014-10-13 | 16 | 67% | 1d | 2014-10-02 | 2014-10-07 | 4d | 16d | 0d | General Labor [200%]; Alex Kolar | 32h | 24h | 1,280 | 1,280 | 800 |
| 18 | L.9 | Create touch panel images |  | 1d | 2014-10-08 A | 2014-10-08 | 17SS | 99% | 0d | 2014-10-08 | 2014-10-09 | 2d | 19d | 3d | General Labor [200%]; Alex Kolar | 16h | 16h | 320 | 1,280 | 320 |
| 19 | 4.4 | Security completed | milestone | 0d | 2014-10-13 | 2014-10-13 | 16, 17, 18 |  |  | 2014-10-09 | 2014-10-09 | 0d | 12d |  | General Labor; Alex Kolar |  |  |  |  |  |
| 20 | E | **Testing** |  | 10d | 2014-10-06 A | 2014-10-17 | 10 | 40% | 6d | 2014-09-30 | 2014-10-07 | 6d | 0d |  |  | 80h | 46h | 3,840 | 3,840 | 2,320 |
| 21 | E.1 | Test hardware |  | 1d | 2014-10-06 A | 2014-10-06 A |  | 100% |  | 2014-09-30 | 2014-09-30 | 1d |  |  | Alex Kolar; Eli Shalev; Donna Rand | 18h | 18h | 880 | 880 | 880 |
| 22 | E.2 | Test software |  | 4d | 2014-10-07 A | 2014-10-17 | 21 | 50% | 2d | 2014-10-01 | 2014-10-06 | 4d | 0d |  | Alex Kolar; Eli Shalev [50%]; Donna Rand [50%] | 44h | 28h | 2,080 | 2,080 | 1,440 |
| 23 | E.5 | Test security |  | 2.5d | 2014-10-07 | 2014-10-13 | 22SS |  |  | 2014-10-01 | 2014-10-07 | 2.5d | 4d |  | Alex Kolar; Eli Shalev [50%]; Donna Rand | 18h |  | 880 | 880 |  |
| 24 | 5.4 | Testing completed | milestone | 0d | 2014-10-17 | 2014-10-17 | 21, 22, 23 |  |  | 2014-10-07 | 2014-10-07 | 0d | 0d |  | Alex Kolar; Eli Shalev; Donna Rand |  |  |  |  |  |

| ID | WBS | Task | Type | Duration | Start | Finish | Predecessors | Baseline start | Baseline finish | Baseline duration | Total slack | Resources | Work | Cost | Baseline cost |
| --- | --- | --- | --- | --- | --- | --- | --- | --- | --- | --- | --- | --- | --- | --- | --- |
| 25 | D | **Training** |  | 12d | 2014-10-20 | 2014-11-04 | 20 | 2014-10-08 | 2014-10-23 | 12d | 0d |  | 192h | 5,880 | 5,880 |
| 26 | D.1 | Train management |  | 6d | 2014-10-20 | 2014-10-27 | 24 | 2014-10-08 | 2014-10-15 | 6d | 6d | Contract Trainer; Coordinator | 96h | 2,940 | 2,940 |
| 27 | D.2 | Train users |  | 6d | 2014-10-28 | 2014-11-04 | 24 | 2014-10-16 | 2014-10-23 | 6d | 0d | Contract Trainer; Coordinator | 96h | 2,940 | 2,940 |
| 28 | 6.3 | Training completed | milestone | 0d | 2014-11-04 | 2014-11-04 | 27 | 2014-10-23 | 2014-10-23 | 0d | 0d | Contract Trainer; Coordinator |  |  |  |
