# Your Name

Schedule from MS Project, 2014-08-04 to 2014-11-20, status date 2014-10-10, costs in $, A marks actual dates.
ViewPoint Partners

## Calendars

- Standard: Mon-Fri 08:00-12:00, 13:00-17:00; Sat-Sun off.

## Resources

| Resource | Group | Unit | Rate | Notes |
| --- | --- | --- | --- | --- |
| Emily Michaels | Mgmt |  | 100 |  |
| Alex Kolar | PM |  | 60 |  |
| General Labor | Temp |  | 20 |  |
| Coordinator | Temp |  | 10 |  |
| Eli Shalev | PM |  | 40 |  |
| Donna Rand | PM |  | 40 |  |
| Contract Trainer | Temp |  | 20 |  |
| Cabling |  | Ft | 0.5 |  |
| Computers |  |  | 1200 |  |
| Network printer |  |  | 1000 |  |
| LCD HD 42" display panels |  |  | 1200 |  |
| Touch panels |  |  | 1000 |  |
| Control system |  |  | 20000 |  |
| Microphones |  |  | 50 |  |
| Speakers |  |  | 250 |  |
| Digital video recorders |  |  | 800 |  |
| Conference tables |  |  | 950 |  |
| Chairs |  |  | 50 | 12 chairs per room |

## Schedule

| ID | WBS | Task | Type | Duration | Start | Finish | Predecessors | Complete | Remaining | Baseline start | Baseline finish | Baseline duration | Total slack | Free slack | Deadline | Resources | Work | Actual work | Cost | Baseline cost | Actual cost |
| --- | --- | --- | --- | --- | --- | --- | --- | --- | --- | --- | --- | --- | --- | --- | --- | --- | --- | --- | --- | --- | --- |
| 1 | A | **Analysis** |  | 13d | 2014-08-04 A | 2014-08-20 A |  | 100% |  | 2014-08-04 | 2014-08-20 | 13d |  |  |  |  | 176h | 176h | 13,120 | 13,120 | 13,120 |
| 2 | A.1 | Detail current status |  | 3d | 2014-08-04 A | 2014-08-06 A |  | 100% |  | 2014-08-04 | 2014-08-06 | 3d |  |  |  | Alex Kolar; Emily Michaels | 40h | 40h | 2,720 | 2,720 | 2,720 |
| 3 | A.2 | Conduct needs analysis |  | 2w | 2014-08-07 A | 2014-08-20 A | 2 | 100% |  | 2014-08-07 | 2014-08-20 | 2w |  |  |  | Alex Kolar; Emily Michaels | 136h | 136h | 10,400 | 10,400 | 10,400 |
| 4 | 1.3 | Analysis completed | milestone | 0d | 2014-08-20 A | 2014-08-20 A | 3 | 100% |  | 2014-08-20 | 2014-08-20 | 0d |  |  |  | Emily Michaels |  |  |  |  |  |
| 5 | B | **Design** |  | 36.25d | 2014-08-21 A | 2014-10-10 |  | 83% | 6.26d | 2014-08-21 | 2014-09-12 | 17d | 3.25d |  |  |  | 592h | 516h | 45,760 | 13,760 | 40,480 |
| 6 | B.1 | Build Request for Proposal |  | 29d | 2014-08-21 A | 2014-09-30 A | 4 | 100% |  | 2014-08-21 | 2014-08-26 | 4d |  |  |  | Emily Michaels; Alex Kolar | 464h | 464h | 37,120 | 5,120 | 37,120 |
| 7 | B.2 | Gather vendor bids |  | 2w | 2014-08-27 A | 2014-10-07 | 6 | 50% | 1w | 2014-08-27 | 2014-09-09 | 2w | 3.25d | 0d |  | Alex Kolar | 80h | 40h | 4,800 | 4,800 | 2,400 |
| 8 | B.3 | Choose vendors |  | 3d | 2014-09-10 A | 2014-10-10 | 7 | 25% | 2.25d | 2014-09-10 | 2014-09-12 | 3d | 3.25d | 0d |  | Alex Kolar; Emily Michaels | 48h | 12h | 3,840 | 3,840 | 960 |
| 9 | B.99 | Sign contracts | milestone | 0d | 2014-10-10 | 2014-10-10 | 8 |  |  | 2014-09-12 | 2014-09-12 | 0d | 3.25d | 0d |  | Emily Michaels |  |  |  |  |  |
| 10 | C | **Installation** |  | 11d | 2014-10-10 A | 2014-10-27 |  | 30% | 7.75d | 2014-09-15 | 2014-09-29 | 11d | 0d |  |  |  | 192h | 64h | 60,390 | 60,390 | 11,280 |
| 11 | C.1 | Install cabling |  | 1d | 2014-10-10 A | 2014-10-13 | 9 | 75% | 0.25d | 2014-09-15 | 2014-09-15 | 1d | 2.5d | 0d |  | General Labor [400%]; Cabling [1000 Ft] | 32h | 24h | 1,140 | 1,140 | 480 |
| 12 | C.2 | Install hardware |  | 5d | 2014-10-13 A | 2014-10-20 | 11 | 50% | 2.5d | 2014-09-16 | 2014-09-22 | 5d | 0d |  |  | General Labor [200%]; Computers [500%]; Control system; Digital video recorders [500%]; LCD HD 42" display panels [500%]; Microphones [1000%]; Network printer; Speakers [2000%]; Touch panels [500%]; Conference tables [500%]; Chairs [6000%] | 80h | 40h | 56,850 | 56,850 | 10,800 |
| 13 | C.3 | Install software |  | 5d | 2014-10-20 | 2014-10-27 | 12 |  |  | 2014-09-23 | 2014-09-29 | 5d | 0d |  |  | General Labor [200%] | 80h |  | 2,400 | 2,400 |  |
| 14 | 3.4 | Installation completed | milestone | 0d | 2014-10-27 | 2014-10-27 | 13 |  |  | 2014-09-29 | 2014-09-29 | 0d | 0d |  |  | General Labor |  |  |  |  |  |
| 15 | L | **Security** |  | 8d | 2014-10-27 | 2014-11-06 | 10 |  |  | 2014-09-29 | 2014-10-09 | 8d | 3.75d |  |  |  | 80h |  | 2,880 | 2,880 |  |
| 16 | L.7 | Create user IDs and passwords |  | 2d | 2014-10-27 | 2014-10-29 | 14 |  |  | 2014-09-29 | 2014-10-01 | 2d | 10d | 0d |  | General Labor; Alex Kolar | 16h |  | 320 | 320 |  |
| 17 | L.8 | Create access hierarchy |  | 4d | 2014-10-29 | 2014-11-04 | 16 |  |  | 2014-10-02 | 2014-10-07 | 4d | 10d | 0d |  | General Labor; Alex Kolar | 32h |  | 1,280 | 1,280 |  |
| 18 | L.9 | Create touch panel images |  | 2d | 2014-11-04 | 2014-11-06 | 17 |  |  | 2014-10-08 | 2014-10-09 | 2d | 10d | 0d |  | General Labor; Alex Kolar | 32h |  | 1,280 | 1,280 |  |
| 19 | 4.4 | Security completed | milestone | 0d | 2014-11-06 | 2014-11-06 | 16, 17, 18 |  |  | 2014-10-09 | 2014-10-09 | 0d | 3.75d |  | 2014-11-11 | General Labor; Alex Kolar |  |  |  |  |  |
| 20 | E | **Testing** |  | 6d | 2014-10-27 | 2014-11-04 | 10 |  |  | 2014-09-30 | 2014-10-07 | 6d | 0d |  |  |  | 80h |  | 3,840 | 3,840 |  |
| 21 | E.1 | Test hardware |  | 1d | 2014-10-27 | 2014-10-28 |  |  |  | 2014-09-30 | 2014-09-30 | 1d | 0d |  |  | Alex Kolar; Eli Shalev; Donna Rand | 18h |  | 880 | 880 |  |
| 22 | E.2 | Test software |  | 4d | 2014-10-28 | 2014-11-03 | 21 |  |  | 2014-10-01 | 2014-10-06 | 4d | 0d |  |  | Alex Kolar; Eli Shalev [50%]; Donna Rand [50%] | 44h |  | 2,080 | 2,080 |  |
| 23 | E.5 | Test security |  | 2.5d | 2014-10-28 | 2014-11-04 | 22SS |  |  | 2014-10-01 | 2014-10-07 | 2.5d | 0d |  |  | Alex Kolar; Eli Shalev [50%]; Donna Rand | 18h |  | 880 | 880 |  |
| 24 | 5.4 | Testing completed | milestone | 0d | 2014-11-04 | 2014-11-04 | 21, 22, 23 |  |  | 2014-10-07 | 2014-10-07 | 0d | 0d |  |  | Alex Kolar; Eli Shalev; Donna Rand |  |  |  |  |  |

| ID | WBS | Task | Type | Duration | Start | Finish | Predecessors | Baseline start | Baseline finish | Baseline duration | Total slack | Resources | Work | Cost | Baseline cost |
| --- | --- | --- | --- | --- | --- | --- | --- | --- | --- | --- | --- | --- | --- | --- | --- |
| 25 | D | **Training** |  | 12d | 2014-11-04 | 2014-11-20 | 20 | 2014-10-08 | 2014-10-23 | 12d | 0d |  | 192h | 5,880 | 5,880 |
| 26 | D.1 | Train management |  | 6d | 2014-11-04 | 2014-11-12 | 24 | 2014-10-08 | 2014-10-15 | 6d | 6d | Contract Trainer; Coordinator | 96h | 2,940 | 2,940 |
| 27 | D.2 | Train users |  | 6d | 2014-11-12 | 2014-11-20 | 24 | 2014-10-16 | 2014-10-23 | 6d | 0d | Contract Trainer; Coordinator | 96h | 2,940 | 2,940 |
| 28 | 6.3 | Training completed | milestone | 0d | 2014-11-20 | 2014-11-20 | 27 | 2014-10-23 | 2014-10-23 | 0d | 0d | Contract Trainer; Coordinator |  |  |  |
