# Grant-6

Schedule from MS Project, 2014-06-30 to 2014-09-05, status date 2014-12-16, scheduled back from the finish, costs in $, A marks actual dates.
NatureSpace

## Calendars

- Standard: Mon-Fri 08:00-12:00, 13:00-17:00; Sat-Sun off.

## Resources

| Resource | Rate |
| --- | --- |
| Your Name |  |
| Mayor |  |
| Volunteer Coordinator |  |
| Contractor |  |
| Sunset Room | 50 |
| School Sponsor |  |

## Schedule

| ID | WBS | Task | Type | Duration | Start | Finish | Predecessors | Complete | Baseline start | Baseline finish | Baseline duration | Baseline 1 start | Baseline 1 finish | Constraint | Resources | Work | Actual work | Cost | Baseline cost | Actual cost |
| --- | --- | --- | --- | --- | --- | --- | --- | --- | --- | --- | --- | --- | --- | --- | --- | --- | --- | --- | --- | --- |
| 1 | 1 | **Planning** |  | 15d | 2014-06-30 A | 2014-07-18 A |  | 100% | 2005-06-29 | 2005-07-19 | 15d | 2005-06-29 | 2005-07-19 | as late as possible |  | 240h | 240h |  |  |  |
| 2 | 1.1 | Identify park sponsor |  | 5d | 2014-06-30 A | 2014-07-04 A |  | 100% | 2005-06-29 | 2005-07-05 | 5d | 2005-06-29 | 2005-07-05 | as late as possible | Your Name; Mayor | 80h | 80h |  |  |  |
| 3 | 1.2 | Research equipment choices |  | 10d | 2014-07-07 A | 2014-07-18 A | 2 | 100% | 2005-07-06 | 2005-07-19 | 10d | 2005-07-06 | 2005-07-19 | as late as possible | Your Name; School Sponsor | 160h | 160h |  |  |  |
| 4 | 2 | **Fundraising** |  | 6d | 2014-07-21 A | 2014-07-29 A |  | 100% | 2005-07-20 | 2005-07-28 | 6d | 2005-07-20 | 2005-07-28 | as late as possible |  | 104h | 104h | 300 | 50 | 300 |
| 5 | 2.1 | Send informational flyers |  | 5d | 2014-07-21 A | 2014-07-25 A | 3 | 100% | 2005-07-20 | 2005-07-26 | 5d | 2005-07-20 | 2005-07-26 | as late as possible | Your Name; School Sponsor | 80h | 80h |  |  |  |
| 6 | 2.2 | Hold information meeting |  | 1d | 2014-07-28 A | 2014-07-28 A | 5 | 100% | 2005-07-27 | 2005-07-27 | 1d | 2005-07-27 | 2005-07-27 | as late as possible | Your Name; Volunteer Coordinator; School Sponsor; Sunset Room | 24h | 24h | 300 | 50 | 300 |
| 7 | 2.3 | Set fundraiser goals | milestone | 0d | 2014-07-29 A | 2014-07-29 A | 6 | 100% | 2005-07-28 | 2005-07-28 | 0d | 2005-07-28 | 2005-07-28 | as late as possible | Your Name; Volunteer Coordinator; School Sponsor; Sunset Room |  |  |  |  |  |
| 8 | 3 | **Building** |  | 29d | 2014-07-29 A | 2014-09-05 A |  | 100% | 2005-07-28 | 2005-09-06 | 29d | 2005-07-28 | 2005-09-06 | as late as possible |  | 616h | 616h | 3,000 |  | 3,000 |
| 9 | 3.1 | Choose contractor |  | 10d | 2014-07-29 A | 2014-08-11 A | 7 | 100% | 2005-07-28 | 2005-08-10 | 10d | 2005-07-28 | 2005-08-10 | as late as possible | Your Name; School Sponsor | 160h | 160h |  |  |  |
| 10 | 3.2 | Schedule installation |  | 5d | 2014-08-12 A | 2014-08-18 A | 9 | 100% | 2005-08-11 | 2005-08-17 | 5d | 2005-08-11 | 2005-08-17 | as late as possible | Your Name; School Sponsor; Contractor | 120h | 120h |  |  |  |
| 11 | 3.3 | Build playground |  | 14d | 2014-08-19 A | 2014-09-05 A | 10 | 100% | 2005-08-18 | 2005-09-06 | 14d | 2005-08-18 | 2005-09-06 | as late as possible | Your Name; School Sponsor; Contractor | 336h | 336h |  |  |  |
