# Your Name

Schedule from MS Project, 2014-08-01 to 2014-10-09, status date 2014-10-17, costs in $, A marks actual dates.
River Dell Development

## Calendars

- Standard: Mon-Fri 08:00-12:00, 13:00-17:00; Sat-Sun off.
- Electricians: Mon-Fri 08:00-12:00, 13:00-17:00; Sat-Sun off.

## Resources

| Resource | Unit | Rate | Cost per use |
| --- | --- | --- | --- |
| Your Name |  | 60 |  |
| General Contractor |  | 50 |  |
| General Labor |  | 30 |  |
| Cement |  | 1000 |  |
| Lumber |  | 8000 |  |
| Shingles |  | 1500 |  |
| Insulation |  | 1200 |  |
| Bricks | brick | 0.25 |  |
| Delivery |  |  | 1000 |
| Silvia Lockhart |  | 75 | 100 |

## Schedule

| ID | WBS | Task | Type | Duration | Start | Finish | Predecessors | Complete | Baseline start | Baseline finish | Baseline duration | Constraint | Deadline | Calendar | Resources | Work | Actual work | Cost | Baseline cost | Actual cost |
| --- | --- | --- | --- | --- | --- | --- | --- | --- | --- | --- | --- | --- | --- | --- | --- | --- | --- | --- | --- | --- |
| 1 | A | **Planning** |  | 10d | 2014-08-01 A | 2014-08-14 A |  | 100% | 2014-08-01 | 2014-08-14 | 10d |  |  |  |  | 160h | 160h | 61,000 | 60,200 | 61,000 |
| 2 | A.1 | Secure financing |  | 5d | 2014-08-01 A | 2014-08-07 A |  | 100% | 2014-08-01 | 2014-08-07 | 5d |  |  |  | Your Name; Silvia Lockhart | 80h | 80h | 5,500 | 5,100 | 5,500 |
| 3 | A.2 | Purchase lot |  | 5d | 2014-08-08 A | 2014-08-14 A | 2FS-2d | 100% | 2014-08-08 | 2014-08-14 | 5d |  |  |  | Your Name; Silvia Lockhart | 80h | 80h | 5,500 | 5,100 | 5,500 |
| 4 | A.99 | Sign all contracts | milestone | 0d | 2014-08-01 A | 2014-08-01 A |  | 100% | 2014-08-01 | 2014-08-01 | 0d |  |  |  |  |  |  |  |  |  |
| 5 | B | **Exterior** |  | 20d | 2014-08-15 A | 2014-09-11 A | 1 | 100% | 2014-08-15 | 2014-09-03 | 14d |  |  |  | Delivery | 360.16h | 360.16h | 49,488 | 49,968 | 49,488 |
| 6 | B.1 | Dig foundation |  | 2d | 2014-08-15 A | 2014-08-18 A |  | 100% | 2014-08-15 | 2014-08-18 | 2d |  |  |  | General Labor [300%]; General Contractor | 48.16h | 48.16h | 1,448 | 1,448 | 1,448 |
| 7 | B.2 | Pour cement |  | 1d | 2014-08-19 A | 2014-08-19 A | 6 | 100% | 2014-08-19 | 2014-08-19 | 1d |  |  |  | General Labor [300%]; Cement | 24h | 24h | 1,720 | 1,720 | 1,720 |
| 8 | B.3 | Frame house |  | 3d | 2014-08-22 A | 2014-08-26 A | 7FS+1d | 100% | 2014-08-21 | 2014-08-25 | 3d |  |  |  | General Labor [500%]; Lumber; General Contractor | 144h | 144h | 12,800 | 12,800 | 12,800 |
| 9 | B.4 | Roof house |  | 3d | 2014-08-27 A | 2014-08-30 A | 8 | 100% | 2014-08-26 | 2014-09-01 | 5d |  |  |  | General Labor; Shingles | 24h | 24h | 2,220 | 2,700 | 2,220 |
| 10 | B.5 | Install insulation |  | 5d | 2014-08-27 A | 2014-09-02 A | 8 | 100% | 2014-08-26 | 2014-09-01 | 5d |  |  |  | General Labor; Insulation | 40h | 40h | 2,400 | 2,400 | 2,400 |
| 11 | B.6 | Brick exterior |  | 2d | 2014-09-10 A | 2014-09-11 A | 10 | 100% | 2014-09-02 | 2014-09-03 | 2d | start no earlier than 2014-09-10 | 2014-09-12 |  | General Labor [500%]; Bricks [2000 brick] | 80h | 80h | 2,900 | 2,900 | 2,900 |
| 12 | C | **Interior** |  | 19.75d | 2014-09-12 A | 2014-10-09 A |  | 100% | 2014-09-04 | 2014-10-17 | 31.38d |  |  |  | Delivery | 136h | 136h | 37,800 | 41,800 | 37,800 |
| 13 | C.1 | Install plumbing |  | 2d | 2014-09-12 A | 2014-09-15 A | 11 | 100% | 2014-09-04 | 2014-09-09 | 4d |  |  |  | General Contractor | 16h | 16h | 800 | 1,600 | 800 |
| 14 | C.2 | Install electrical |  | 2d | 2014-09-16 A | 2014-09-19 A | 13 | 100% | 2014-09-10 | 2014-09-19 | 5d |  |  | Electricians | General Contractor | 16h | 16h | 800 | 2,000 | 800 |
| 15 | C.3 | Install drywall |  | 5d | 2014-09-18 A | 2014-09-25 A | 14FS-1d | 100% | 2014-09-18 | 2014-10-03 | 10d |  |  |  | General Contractor | 40h | 40h | 2,000 | 4,000 | 2,000 |
| 16 | C.8 | Paint |  | 4d | 2014-09-26 A | 2014-10-02 A | 15FS+1d | 100% | 2014-10-06 | 2014-10-10 | 4d |  |  |  | General Contractor | 32h | 32h | 1,600 | 1,600 | 1,600 |
| 17 | C.10 | Install carpeting |  | 4d | 2014-10-03 A | 2014-10-09 A | 15, 16FS+1d | 100% | 2014-10-13 | 2014-10-17 | 4d |  |  |  | General Contractor | 32h | 32h | 1,600 | 1,600 | 1,600 |

Notes:
- 16: Consider primer for all the walls.
