# Your Name

Schedule from MS Project, 2014-08-04 to 2014-10-27, status date 2014-11-01, costs in $, A marks actual dates.
ViewPoint Partners

## Calendars

- Standard: Mon-Fri 08:00-12:00, 13:00-17:00; Sat-Sun off.

## Resources

| Resource | Group | Unit | Rate | Notes |
| --- | --- | --- | --- | --- |
| Emily Michaels | Mgmt |  | 100 | Job well done! |
| Your Name | PM |  | 60 |  |
| General Labor | Temp |  | 20 |  |
| Coordinator | Temp |  | 10 |  |
| Eli Shalev | PM |  | 40 |  |
| Donna Rand | PM |  | 40 |  |
| Contract Trainer | Temp |  | 20 |  |
| Cabling |  | Ft | 0.5 |  |
| Computer |  |  | 1200 |  |
| Network printer |  |  | 1000 |  |
| LCD HD 42" display panel |  |  | 1200 |  |
| Touch panel |  |  | 1000 |  |
| Control system |  |  | 20000 |  |
| Microphone |  |  | 50 |  |
| Speakers |  |  | 250 |  |
| Digital video recorder |  |  | 800 |  |
| Conference table |  |  | 950 |  |
| Chairs |  |  | 50 | 12 chairs per room |

## Schedule

| ID | WBS | Task | Type | Duration | Start | Finish | Predecessors | Complete | Baseline start | Baseline finish | Baseline duration | Deadline | Resources | Work | Actual work | Cost | Baseline cost | Actual cost |
| --- | --- | --- | --- | --- | --- | --- | --- | --- | --- | --- | --- | --- | --- | --- | --- | --- | --- | --- |
| 1 | A | **Analysis** |  | 13d | 2014-08-04 A | 2014-08-20 A |  | 100% | 2014-08-04 | 2014-08-20 | 13d |  |  | 176h | 176h | 13,120 | 13,120 | 13,120 |
| 2 | A.1 | Detail current status |  | 3d | 2014-08-04 A | 2014-08-06 A |  | 100% | 2014-08-04 | 2014-08-06 | 3d |  | Your Name; Emily Michaels | 40h | 40h | 2,720 | 2,720 | 2,720 |
| 3 | A.2 | Conduct needs analysis |  | 2w | 2014-08-07 A | 2014-08-20 A | 2 | 100% | 2014-08-07 | 2014-08-20 | 2w |  | Your Name; Emily Michaels | 136h | 136h | 10,400 | 10,400 | 10,400 |
| 4 | 1.3 | Analysis completed | milestone | 0d | 2014-08-20 A | 2014-08-20 A | 3 | 100% | 2014-08-20 | 2014-08-20 | 0d |  | Emily Michaels |  |  |  |  |  |
| 5 | B | **Design** |  | 22d | 2014-08-21 A | 2014-09-19 A |  | 100% | 2014-08-21 | 2014-09-12 | 17d |  |  | 248h | 248h | 17,440 | 13,760 | 17,440 |
| 6 | B.1 | Build Request for Proposal |  | 5d | 2014-08-21 A | 2014-08-27 A | 4 | 100% | 2014-08-21 | 2014-08-26 | 4d |  | Emily Michaels; Your Name | 80h | 80h | 6,400 | 5,120 | 6,400 |
| 7 | B.2 | Gather vendor bids |  | 3w | 2014-08-27 A | 2014-09-16 A | 6 | 100% | 2014-08-27 | 2014-09-09 | 2w |  | Your Name | 120h | 120h | 7,200 | 4,800 | 7,200 |
| 8 | B.3 | Choose vendors |  | 3d | 2014-09-17 A | 2014-09-19 A | 7 | 100% | 2014-09-10 | 2014-09-12 | 3d |  | Your Name; Emily Michaels | 48h | 48h | 3,840 | 3,840 | 3,840 |
| 9 | B.99 | Sign contracts | milestone | 0d | 2014-09-19 A | 2014-09-19 A | 8 | 100% | 2014-09-12 | 2014-09-12 | 0d |  | Emily Michaels |  |  |  |  |  |
| 10 | C | **Installation** |  | 12d | 2014-09-22 A | 2014-10-07 A |  | 100% | 2014-09-15 | 2014-09-29 | 11d |  |  | 224h | 224h | 60,870 | 60,390 | 60,870 |
| 11 | C.1 | Install cabling |  | 2d | 2014-09-22 A | 2014-09-23 A | 9 | 100% | 2014-09-15 | 2014-09-15 | 1d |  | General Labor [400%]; Cabling [1000 Ft] | 64h | 64h | 1,780 | 1,140 | 1,780 |
| 12 | C.2 | Install hardware |  | 6d | 2014-09-24 A | 2014-10-01 A | 11 | 100% | 2014-09-16 | 2014-09-22 | 5d |  | General Labor [200%]; Computer [500%]; Control system; Digital video recorder [500%]; LCD HD 42" display panel [500%]; Microphone [1000%]; Network printer; Speakers [2000%]; Touch panel [500%]; Conference table [500%]; Chairs [6000%] | 96h | 96h | 57,170 | 56,850 | 57,170 |
| 13 | C.3 | Install software |  | 4d | 2014-10-02 A | 2014-10-07 A | 12 | 100% | 2014-09-23 | 2014-09-29 | 5d |  | General Labor [200%] | 64h | 64h | 1,920 | 2,400 | 1,920 |
| 14 | 3.4 | Installation completed | milestone | 0d | 2014-10-07 A | 2014-10-07 A | 13 | 100% | 2014-09-29 | 2014-09-29 | 0d |  | General Labor |  |  |  |  |  |
| 15 | L | **Security** |  | 10.5d | 2014-10-07 A | 2014-10-22 A | 10 | 100% | 2014-09-29 | 2014-10-09 | 8d |  |  | 112h | 112h | 4,000 | 2,880 | 4,000 |
| 16 | L.7 | Create user IDs and passwords |  | 3d | 2014-10-07 A | 2014-10-10 A | 14 | 100% | 2014-09-29 | 2014-10-01 | 2d |  | General Labor; Your Name | 24h | 24h | 480 | 320 | 480 |
| 17 | L.8 | Create access hierarchy |  | 4d | 2014-10-13 A | 2014-10-16 A | 16 | 100% | 2014-10-02 | 2014-10-07 | 4d |  | General Labor; Your Name | 32h | 32h | 1,280 | 1,280 | 1,280 |
| 18 | L.9 | Create touch panel images |  | 2d | 2014-10-17 A | 2014-10-20 A | 17 | 100% | 2014-10-08 | 2014-10-09 | 2d |  | General Labor; Your Name | 32h | 32h | 1,280 | 1,280 | 1,280 |
| 19 | 4.4 | Security completed |  | 1.5d | 2014-10-21 A | 2014-10-22 A | 16, 17, 18 | 100% | 2014-10-09 | 2014-10-09 | 0d | 2014-10-20 | General Labor; Your Name | 24h | 24h | 960 |  | 960 |
| 20 | E | **Testing** |  | 7.5d | 2014-10-08 A | 2014-10-17 A | 10 | 100% | 2014-09-30 | 2014-10-07 | 6d |  |  | 108h | 108h | 5,120 | 3,840 | 5,120 |
| 21 | E.1 | Test hardware |  | 2d | 2014-10-08 A | 2014-10-09 A |  | 100% | 2014-09-30 | 2014-09-30 | 1d |  | Your Name; Eli Shalev; Donna Rand | 42h | 42h | 2,000 | 880 | 2,000 |
| 22 | E.2 | Test software |  | 4d | 2014-10-10 A | 2014-10-15 A | 21 | 100% | 2014-10-01 | 2014-10-06 | 4d |  | Your Name; Eli Shalev [50%]; Donna Rand [50%] | 44h | 44h | 2,080 | 2,080 | 2,080 |
| 23 | E.5 | Test security |  | 3d | 2014-10-10 A | 2014-10-17 A | 22SS | 100% | 2014-10-01 | 2014-10-07 | 2.5d |  | Your Name; Eli Shalev [50%]; Donna Rand | 22h | 22h | 1,040 | 880 | 1,040 |
| 24 | 5.4 | Testing completed | milestone | 0d | 2014-10-17 A | 2014-10-17 A | 21, 22, 23 | 100% | 2014-10-07 | 2014-10-07 | 0d |  | Your Name; Eli Shalev; Donna Rand |  |  |  |  |  |

| ID | WBS | Task | Type | Duration | Start | Finish | Predecessors | Complete | Baseline start | Baseline finish | Baseline duration | Resources | Work | Actual work | Cost | Baseline cost | Actual cost |
| --- | --- | --- | --- | --- | --- | --- | --- | --- | --- | --- | --- | --- | --- | --- | --- | --- | --- |
| 25 | D | **Training** |  | 7d | 2014-10-17 A | 2014-10-27 A | 20 | 100% | 2014-10-08 | 2014-10-23 | 12d |  | 224h | 224h | 6,360 | 5,880 | 6,360 |
| 26 | D.1 | Train management |  | 7d | 2014-10-17 A | 2014-10-27 A | 24 | 100% | 2014-10-08 | 2014-10-15 | 6d | Contract Trainer; Coordinator | 112h | 112h | 3,180 | 2,940 | 3,180 |
| 27 | D.2 | Train users |  | 7d | 2014-10-17 A | 2014-10-27 A | 24 | 100% | 2014-10-16 | 2014-10-23 | 6d | Contract Trainer; Coordinator | 112h | 112h | 3,180 | 2,940 | 3,180 |
| 28 | 6.3 | Training completed | milestone | 0d | 2014-10-27 A | 2014-10-27 A | 27 | 100% | 2014-10-23 | 2014-10-23 | 0d | Contract Trainer; Coordinator |  |  |  |  |  |
