# Lab for Alex Kolar

Schedule from MS Project, 2014-10-01 to 2014-12-04, status date 2014-11-21, costs in $, A marks actual dates.
ViewPoint Partners

## Calendars

- Standard: Mon-Fri 08:00-12:00, 13:00-17:00; Sat-Sun off.
- Staffing: Mon-Fri 08:00-12:00, 13:00-17:00; Sat-Sun off.

## Resources

| Resource | Group | Rate |
| --- | --- | --- |
| Hans Hawke | TR2 | 100 |
| George Booth | TR2 | 75 |
| Manuals |  | 30 |
| Helene Park |  | 50 |

## Schedule

| ID | WBS | Task | Type | Duration | Start | Finish | Predecessors | Complete | Baseline start | Baseline finish | Baseline duration | Constraint | Calendar | Resources | Work | Actual work | Cost | Baseline cost | Actual cost |
| --- | --- | --- | --- | --- | --- | --- | --- | --- | --- | --- | --- | --- | --- | --- | --- | --- | --- | --- | --- |
| 1 | A | **Documentation** |  | 14.75d | 2014-10-01 A | 2014-10-21 A |  | 100% | 2014-10-01 | 2014-10-10 | 7.75d |  |  |  | 104h | 104h | 9,660 | 9,660 | 9,660 |
| 2 | A.1 | Identify existing skills |  | 3d | 2014-10-01 A | 2014-10-03 A |  | 100% | 2014-10-01 | 2014-10-03 | 3d |  |  | Hans Hawke | 24h | 24h | 2,400 | 2,400 | 2,400 |
| 3 | A.2 | Identify needed skills |  | 3d | 2014-10-01 A | 2014-10-03 A | 2SS | 100% | 2014-10-01 | 2014-10-03 | 3d |  |  | George Booth | 24h | 24h | 1,800 | 1,800 | 1,800 |
| 4 | A.3 | Develop training documentation |  | 3d | 2014-10-07 A | 2014-10-20 A | 3FS+1d | 100% | 2014-10-07 | 2014-10-09 | 3d |  |  | Hans Hawke; George Booth | 48h | 48h | 4,200 | 4,200 | 4,200 |
| 5 | 1.4 | Distribute training manuals |  | 0.02h | 2014-10-20 A | 2014-10-21 A | 4 | 100% | 2014-10-09 | 2014-10-10 | 0h |  |  | Hans Hawke; Manuals [1000%] | 8h | 8h | 1,260 | 1,260 | 1,260 |
| 6 | B | **Trainers** |  | 12d | 2014-11-05 A | 2014-11-20 A |  | 100% | 2014-10-10 | 2014-11-12 | 23.5d |  |  |  | 142h | 142h | 13,825 | 15,400 | 13,825 |
| 7 | B.1 | Develop contract |  | 3d | 2014-11-05 A | 2014-11-07 A | 4 | 100% | 2014-10-10 | 2014-10-17 | 4.5d |  |  | Hans Hawke | 24h | 24h | 2,400 | 3,600 | 2,400 |
| 8 | 2.2 | Schedule classes |  | 2d | 2014-11-12 A | 2014-11-14 A | 7FS-1d | 100% | 2014-10-21 | 2014-10-23 | 2d |  |  | Hans Hawke; George Booth | 32h | 32h | 2,800 | 2,800 | 2,800 |
| 9 | B.2 | Hire trainers |  | 3.88d | 2014-11-05 A | 2014-11-20 A | 8 | 100% | 2014-10-24 | 2014-11-12 | 6.5d |  | Staffing | Hans Hawke; George Booth; Helene Park | 86h | 86h | 8,625 | 9,000 | 8,625 |
| 10 | C | **Lab** |  | 43.12d | 2014-10-06 A | 2014-12-04 A |  | 100% | 2014-11-13 | 2014-11-18 | 2.62d |  |  |  | 32h | 32h | 3,800 | 3,800 | 3,800 |
| 11 | C.1 | Secure lab space |  | 2.62d | 2014-12-01 A | 2014-12-04 A | 9FS+1d | 100% | 2014-11-13 | 2014-11-18 | 2.62d |  |  | Hans Hawke; George Booth | 32h | 32h | 3,800 | 3,800 | 3,800 |
| 12 | C.2 | Sign lab contract | milestone | 0d | 2014-11-20 A | 2014-11-20 A | 11 | 100% | 2014-11-18 | 2014-11-18 | 0d |  |  |  |  |  |  |  |  |
| 13 | 3.3 | **Write progress reports** |  | 41d | 2014-10-06 A | 2014-12-01 A |  | 100% |  |  |  |  |  |  |  |  |  |  |  |
| 14 | 3.3.1 | Write progress reports 1 |  | 1d | 2014-10-06 A | 2014-10-06 A |  | 100% |  |  |  | start no earlier than 2014-10-06 |  |  |  |  |  |  |  |
| 15 | 3.3.2 | Write progress reports 2 |  | 1d | 2014-10-13 A | 2014-10-13 A |  | 100% |  |  |  | start no earlier than 2014-10-13 |  |  |  |  |  |  |  |
| 16 | 3.3.3 | Write progress reports 3 |  | 1d | 2014-10-20 A | 2014-10-20 A |  | 100% |  |  |  | start no earlier than 2014-10-20 |  |  |  |  |  |  |  |
| 17 | 3.3.4 | Write progress reports 4 |  | 1d | 2014-10-27 A | 2014-10-27 A |  | 100% |  |  |  | start no earlier than 2014-10-27 |  |  |  |  |  |  |  |
| 18 | 3.3.5 | Write progress reports 5 |  | 1d | 2014-11-03 A | 2014-11-03 A |  | 100% |  |  |  | start no earlier than 2014-11-03 |  |  |  |  |  |  |  |
| 19 | 3.3.6 | Write progress reports 6 |  | 1d | 2014-11-10 A | 2014-11-10 A |  | 100% |  |  |  | start no earlier than 2014-11-10 |  |  |  |  |  |  |  |
| 20 | 3.3.7 | Write progress reports 7 |  | 1d | 2014-11-17 A | 2014-11-17 A |  | 100% |  |  |  | start no earlier than 2014-11-17 |  |  |  |  |  |  |  |
| 21 | 3.3.8 | Write progress reports 8 |  | 1d | 2014-11-24 A | 2014-11-24 A |  | 100% |  |  |  | start no earlier than 2014-11-24 |  |  |  |  |  |  |  |
| 22 | 3.3.9 | Write progress reports 9 |  | 1d | 2014-12-01 A | 2014-12-01 A |  | 100% |  |  |  | start no earlier than 2014-12-01 |  |  |  |  |  |  |  |

Notes:
- 4: Use PDF file format for documentation. Hire freelance help for writing. See if Ms. Leuke is available for the job.
- 5: Job well done!
